# 1E - MIT032 - Cronograma Projeto 000250 - IMPLANTACAO SERIE T EFICAZ 2014 01 08

Schedule from MS Project, 2013-10-13 to 2014-04-10, A marks actual dates.
Microsoft

## Calendars

- Padrão: Mon off; Tue 09:00-12:00, 13:00-18:00; Wed off; Thu 09:00-12:00, 13:00-18:00; Fri-Sun off. Exceptions (off unless hours are given): 2013-12-24, 2013-12-31.

## Resources

| Resource |
| --- |
| TOSTES |
| ALAN |
| TOSTE |

## Schedule

| ID | WBS | Task | Duration | Start | Finish | Predecessors | Complete | Remaining | Baseline start | Baseline finish | Baseline duration | Total slack | Constraint | Resources | Work | Actual work |
| --- | --- | --- | --- | --- | --- | --- | --- | --- | --- | --- | --- | --- | --- | --- | --- | --- |
| 1 | 1 | **000250 - IMPLANTACAO SERIE T EFICAZ (INFRA,CFG,COM,EST,FAT,NFES,NFE,FIN)** | 50d? | 2013-10-13 00:00 A | 2014-04-10 18:00 |  | 45% | 27.37d? | 2013-12-03 09:00 | 2014-04-10 18:00 | 36d | 0d |  |  | 280.05h | 124.9h |
| 2 | 1.1 | **FASE I - INICIACAO** | 0.5d | 2013-12-03 09:00 A | 2013-12-03 14:00 A |  | 100% |  | 2013-12-03 09:00 | 2013-12-03 14:00 | 0.5d |  |  |  | 4h | 4h |
| 3 | 1.1.1 | **A - RECONHECIMENTO DA ENTRADA DO PROJETO** | 0.12d | 2013-12-03 09:00 A | 2013-12-03 10:00 A |  | 100% |  | 2013-12-03 09:00 | 2013-12-03 10:00 | 0.12d |  |  |  | 1h | 1h |
| 4 | 1.1.1.1 | A1 - INCLUSAO DO PROJETO | 0.5h | 2013-12-03 09:00 A | 2013-12-03 09:30 A |  | 100% |  | 2013-12-03 09:00 | 2013-12-03 09:30 | 0.5h |  | start no earlier than 2013-12-03 09:00 | TOSTES | 0.5h | 0.5h |
| 5 | 1.1.1.2 | A2 - REUNIAO DE TRANSICAO COMERCIAL | 0.5h | 2013-12-03 09:30 A | 2013-12-03 10:00 A | 4 | 100% |  | 2013-12-03 09:30 | 2013-12-03 10:00 | 0.5h |  |  | TOSTES | 0.5h | 0.5h |
| 6 | 1.1.2 | **B - ALINHAMENTO DO PROJETO** | 0.38d | 2013-12-03 10:00 A | 2013-12-03 14:00 A |  | 100% |  | 2013-12-03 10:00 | 2013-12-03 14:00 | 0.38d |  |  |  | 3h | 3h |
| 7 | 1.1.2.1 | B1 - ALINHAMENTO DA EXPECTATIVA COM O CLIENTE | 0.5h | 2013-12-03 10:00 A | 2013-12-03 10:30 A | 3 | 100% |  | 2013-12-03 10:00 | 2013-12-03 10:30 | 0.5h |  |  | TOSTES | 0.5h | 0.5h |
| 8 | 1.1.2.2 | B2 - APRESENTACAO DA GESTAO DE PROJETOS | 0.5h | 2013-12-03 10:30 A | 2013-12-03 11:00 A | 7 | 100% |  | 2013-12-03 10:30 | 2013-12-03 11:00 | 0.5h |  |  | TOSTES | 0.5h | 0.5h |
| 9 | 1.1.2.3 | B3 - DEFINICAO DE EQUIPE DE PROJETOS | 0.5h | 2013-12-03 11:00 A | 2013-12-03 11:30 A | 8 | 100% |  | 2013-12-03 11:00 | 2013-12-03 11:30 | 0.5h |  |  | TOSTES | 0.5h | 0.5h |
| 10 | 1.1.2.4 | B4 - REUNIAO DE ABERTURA DO PROJETO | 0.5h | 2013-12-03 11:30 A | 2013-12-03 12:00 A | 9 | 100% |  | 2013-12-03 11:30 | 2013-12-03 12:00 | 0.5h |  |  | TOSTES | 0.5h | 0.5h |
| 11 | 1.1.2.5 | B5 - VERIFICAO DA ESTRUTURA SIZING | 1h | 2013-12-03 13:00 A | 2013-12-03 14:00 A | 10 | 100% |  | 2013-12-03 13:00 | 2013-12-03 14:00 | 1h |  |  | TOSTES | 1h | 1h |
| 12 | 1.2 | **FASE II - PLANEJAMENTO** | 1d | 2013-12-03 14:00 A | 2013-12-05 14:00 A |  | 100% |  | 2013-12-03 14:00 | 2013-12-05 14:00 | 1d |  |  |  | 8h | 8h |
| 13 | 1.2.1 | **C - DESENVOLVIMENTO DO PLANEJAMENTO** | 0.12d | 2013-12-03 14:00 A | 2013-12-03 15:00 A |  | 100% |  | 2013-12-03 14:00 | 2013-12-03 15:00 | 0.12d |  |  |  | 1h | 1h |
| 14 | 1.2.1.1 | C1 - PLANEJAMENTO DO TREINAMENTO | 0.5h | 2013-12-03 14:00 A | 2013-12-03 14:30 A | 2 | 100% |  | 2013-12-03 14:00 | 2013-12-03 14:30 | 0.5h |  |  | TOSTES | 0.5h | 0.5h |
| 15 | 1.2.1.2 | C2 - ELABORACAO DO PLANO DE PROJETO | 0.5h | 2013-12-03 14:30 A | 2013-12-03 15:00 A | 14 | 100% |  | 2013-12-03 14:30 | 2013-12-03 15:00 | 0.5h |  |  | TOSTES | 0.5h | 0.5h |
| 16 | 1.2.2 | **D - DESENVOLVIMENTO DOS PLANOS COMPLEMENTARES** | 0.62d | 2013-12-03 15:00 A | 2013-12-05 11:00 A |  | 100% |  | 2013-12-03 15:00 | 2013-12-05 11:00 | 0.62d |  |  |  | 5h | 5h |
| 17 | 1.2.2.1 | D1 - ESCOPO | 0.5h | 2013-12-03 15:00 A | 2013-12-03 15:30 A | 13 | 100% |  | 2013-12-03 15:00 | 2013-12-03 15:30 | 0.5h |  |  | TOSTES | 0.5h | 0.5h |
| 18 | 1.2.2.2 | D2 - TEMPO | 0.5h | 2013-12-03 15:30 A | 2013-12-03 16:00 A | 17 | 100% |  | 2013-12-03 15:30 | 2013-12-03 16:00 | 0.5h |  |  | TOSTES | 0.5h | 0.5h |
| 19 | 1.2.2.3 | D3 - CUSTOS | 0.5h | 2013-12-03 16:00 A | 2013-12-03 16:30 A | 18 | 100% |  | 2013-12-03 16:00 | 2013-12-03 16:30 | 0.5h |  |  | TOSTES | 0.5h | 0.5h |
| 20 | 1.2.2.4 | D4 - QUALIDADE | 0.5h | 2013-12-03 16:30 A | 2013-12-03 17:00 A | 19 | 100% |  | 2013-12-03 16:30 | 2013-12-03 17:00 | 0.5h |  |  | TOSTES | 0.5h | 0.5h |
| 21 | 1.2.2.5 | D5 - RECURSOS HUMANOS | 0.5h | 2013-12-03 17:00 A | 2013-12-03 17:30 A | 20 | 100% |  | 2013-12-03 17:00 | 2013-12-03 17:30 | 0.5h |  |  | TOSTES | 0.5h | 0.5h |
| 22 | 1.2.2.6 | D6 - COMUNICACAO | 0.5h | 2013-12-03 17:30 A | 2013-12-03 18:00 A | 21 | 100% |  | 2013-12-03 17:30 | 2013-12-03 18:00 | 0.5h |  |  | TOSTES | 0.5h | 0.5h |
| 23 | 1.2.2.7 | D7 - RISCOS | 0.5h | 2013-12-05 09:00 A | 2013-12-05 09:30 A | 22 | 100% |  | 2013-12-05 09:00 | 2013-12-05 09:30 | 0.5h |  |  | TOSTES | 0.5h | 0.5h |
| 24 | 1.2.2.8 | D8 - AQUISICOES | 0.5h | 2013-12-05 09:30 A | 2013-12-05 10:00 A | 23 | 100% |  | 2013-12-05 09:30 | 2013-12-05 10:00 | 0.5h |  |  | TOSTES | 0.5h | 0.5h |
| 25 | 1.2.2.9 | D9 - INTEGRACOES | 1h | 2013-12-05 10:00 A | 2013-12-05 11:00 A | 24 | 100% |  | 2013-12-05 10:00 | 2013-12-05 11:00 | 1h |  |  | TOSTES | 1h | 1h |

| ID | WBS | Task | Type | Duration | Start | Finish | Predecessors | Complete | Remaining | Baseline start | Baseline finish | Baseline duration | Total slack | Free slack | Resources | Work | Actual work |
| --- | --- | --- | --- | --- | --- | --- | --- | --- | --- | --- | --- | --- | --- | --- | --- | --- | --- |
| 26 | 1.2.3 | **E - MODELAGEMDE PROCESSOS** |  | 0d | 2013-12-05 11:00 A | 2013-12-05 11:00 A |  | 100% |  | 2013-12-05 11:00 | 2013-12-05 11:00 | 0d |  |  |  |  |  |
| 27 | 1.2.3.1 | E1 - LEVANTAMENTO | milestone | 0h | 2013-12-05 11:00 A | 2013-12-05 11:00 A | 16 | 100% |  | 2013-12-05 11:00 | 2013-12-05 11:00 | 0h |  |  | ALAN |  |  |
| 28 | 1.2.3.2 | E2 - DOCUMENTACAO | milestone | 0h | 2013-12-05 11:00 A | 2013-12-05 11:00 A | 27 | 100% |  | 2013-12-05 11:00 | 2013-12-05 11:00 | 0h |  |  | ALAN |  |  |
| 29 | 1.2.3.3 | E3 - VALIDACAO E APROVACAO | milestone | 0h | 2013-12-05 11:00 A | 2013-12-05 11:00 A | 28 | 100% |  | 2013-12-05 11:00 | 2013-12-05 11:00 | 0h |  |  | ALAN |  |  |
| 30 | 1.2.4 | **F - HOMOLOGACAO DO PLANEJAMENTO** |  | 0.25d | 2013-12-05 11:00 A | 2013-12-05 14:00 A |  | 100% |  | 2013-12-05 11:00 | 2013-12-05 14:00 | 0.25d |  |  |  | 2h | 2h |
| 31 | 1.2.4.1 | F1 - APRESENTACAO INTERNA DO PROJETO |  | 0.5h | 2013-12-05 11:00 A | 2013-12-05 11:30 A | 26 | 100% |  | 2013-12-05 11:00 | 2013-12-05 11:30 | 0.5h |  |  | TOSTES | 0.5h | 0.5h |
| 32 | 1.2.4.2 | F2 - VALIDACAO DO PLANO COM O CLIENTE |  | 0.5h | 2013-12-05 11:30 A | 2013-12-05 12:00 A | 31 | 100% |  | 2013-12-05 11:30 | 2013-12-05 12:00 | 0.5h |  |  | TOSTES | 0.5h | 0.5h |
| 33 | 1.2.4.3 | F3 - REUNIAO DE VALIDACAO DO PLANO |  | 1h | 2013-12-05 13:00 A | 2013-12-05 14:00 A | 32 | 100% |  | 2013-12-05 13:00 | 2013-12-05 14:00 | 1h |  |  | TOSTES | 1h | 1h |
| 34 | 1.3 | **FASE III - EXECUCAO** |  | 34d | 2013-12-05 14:00 A | 2014-04-10 14:00 |  | 44% | 19.2d | 2013-12-05 14:00 | 2014-04-10 14:00 | 34d | 0d |  |  | 264.05h | 112.9h |
| 35 | 1.3.1 | **G - PARAMETRIZACAO E CADASTROS** |  | 28.25d | 2013-12-05 14:00 A | 2014-03-20 16:00 |  | 52% | 13.45d | 2013-12-05 14:00 | 2014-03-20 16:00 | 28.25d | 0d |  |  | 218.05h | 112.9h |
| 36 | 1.3.1.1 | G1 - INSTALACAO DO PRODUTO |  | 8h | 2013-12-05 14:00 A | 2013-12-10 14:00 A | 12 | 100% |  | 2013-12-05 14:00 | 2013-12-10 14:00 | 8h |  |  | ALAN | 8h | 8h |
| 37 | 1.3.1.2 | G2 - PARAMETRIZACAO DO SISTEMA |  | 2h | 2013-12-10 14:00 A | 2013-12-10 16:00 A | 36 | 100% |  | 2013-12-10 14:00 | 2013-12-10 16:00 | 2h |  |  | ALAN | 2h | 2h |
| 38 | 1.3.1.3 | G3 - DESENVOLVIMENTO ESPECIFICO |  | 2h | 2013-12-10 16:00 A | 2013-12-10 18:00 | 37 | 30% | 1.4h | 2013-12-10 16:00 | 2013-12-10 18:00 | 2h | 0.12d | 0d | ALAN | 2h | 0.6h |
| 39 | 1.3.1.4 | **G4 - CAPACITACAO** |  | 26.75d | 2013-12-12 09:00 A | 2014-03-20 16:00 |  | 50% | 13.28d | 2013-12-12 09:00 | 2014-03-20 16:00 | 26.75d | 0d |  |  | 206.05h | 102.3h |
| 40 | 1.3.1.4.1 | **CONFIGURADOR** |  | 1.5d | 2013-12-12 09:00 A | 2013-12-17 14:00 |  | 67% | 0.5d | 2013-12-12 09:00 | 2013-12-17 14:00 | 1.5d | 25.25d |  |  | 12h | 8h |
| 41 | 1.3.1.4.1.1 | PARAMETROS |  | 2h | 2013-12-12 09:00 A | 2013-12-12 11:00 | 38 | 50% | 1h | 2013-12-12 09:00 | 2013-12-12 11:00 | 2h | 26.5d |  | ALAN | 2h | 1h |
| 42 | 1.3.1.4.1.2 | USUARIOS |  | 2h | 2013-12-12 11:00 A | 2013-12-12 14:00 A | 41 | 100% |  | 2013-12-12 11:00 | 2013-12-12 14:00 | 2h |  |  | ALAN | 2h | 2h |
| 43 | 1.3.1.4.1.3 | MENUS |  | 2h | 2013-12-12 14:00 A | 2013-12-12 16:00 | 42 | 50% | 1h | 2013-12-12 14:00 | 2013-12-12 16:00 | 2h | 0.12d | 0d | ALAN | 2h | 1h |
| 44 | 1.3.1.4.1.4 | TABELAS |  | 2h | 2013-12-12 16:00 A | 2013-12-12 18:00 | 43 | 50% | 1h | 2013-12-12 16:00 | 2013-12-12 18:00 | 2h | 0.12d | 0d | ALAN | 2h | 1h |
| 45 | 1.3.1.4.1.5 | DICIONARIO DE DADOS |  | 2h | 2013-12-17 09:00 A | 2013-12-17 11:00 | 44 | 50% | 1h | 2013-12-17 09:00 | 2013-12-17 11:00 | 2h | 25.5d |  | ALAN | 2h | 1h |
| 46 | 1.3.1.4.1.6 | CONFIGURACAO RELATORIO POR EMAIL |  | 1h | 2013-12-17 11:00 A | 2013-12-17 12:00 A | 45 | 100% |  | 2013-12-17 11:00 | 2013-12-17 12:00 | 1h |  |  | ALAN | 1h | 1h |
| 47 | 1.3.1.4.1.7 | CRIACAO EMPRESA / FILIAL |  | 1h | 2013-12-17 13:00 A | 2013-12-17 14:00 A | 46 | 100% |  | 2013-12-17 13:00 | 2013-12-17 14:00 | 1h |  |  | ALAN | 1h | 1h |
| 48 | 1.3.1.4.2 | **IMPORTACAO DADOS SERIE1** |  | 2d | 2013-12-17 14:00 A | 2013-12-26 14:00 A |  | 100% |  | 2013-12-17 14:00 | 2013-12-26 14:00 | 2d |  |  |  | 16h | 16h |
| 49 | 1.3.1.4.2.1 | IMPORTAR CADASTROS |  | 8h | 2013-12-17 14:00 A | 2013-12-19 14:00 A | 40 | 100% |  | 2013-12-17 14:00 | 2013-12-19 14:00 | 8h |  |  | ALAN | 8h | 8h |
| 50 | 1.3.1.4.2.2 | IMPORTAR MOVIMENTACOES |  | 8h | 2013-12-19 14:00 A | 2013-12-26 14:00 A | 49 | 100% |  | 2013-12-19 14:00 | 2013-12-26 14:00 | 8h |  |  | ALAN | 8h | 8h |

| ID | WBS | Task | Duration | Start | Finish | Predecessors | Complete | Remaining | Baseline start | Baseline finish | Baseline duration | Total slack | Free slack | Resources | Work | Actual work |
| --- | --- | --- | --- | --- | --- | --- | --- | --- | --- | --- | --- | --- | --- | --- | --- | --- |
| 51 | 1.3.1.4.3 | **CADASTROS BASICOS** | 1.5d | 2013-12-26 14:00 A | 2014-01-02 18:00 |  | 74% | 0.39d | 2013-12-26 14:00 | 2014-01-02 18:00 | 1.5d | 0.38d | 0d |  | 12.05h | 8.9h |
| 52 | 1.3.1.4.3.1 | FORNECEDORES | 1h | 2013-12-26 14:00 A | 2013-12-26 15:00 | 48 | 75% | 0.25h | 2013-12-26 14:00 | 2013-12-26 15:00 | 1h | 0.09d | 0d | ALAN | 1h | 0.75h |
| 53 | 1.3.1.4.3.2 | CLIENTES | 1h | 2013-12-26 15:00 A | 2013-12-26 16:00 | 52 | 75% | 0.25h | 2013-12-26 15:00 | 2013-12-26 16:00 | 1h | 1.62d |  | ALAN | 1h | 0.75h |
| 54 | 1.3.1.4.3.3 | VENDEDORES | 0.5h | 2013-12-26 16:00 A | 2013-12-26 16:30 A | 53 | 100% |  | 2013-12-26 16:00 | 2013-12-26 16:30 | 0.5h |  |  | ALAN | 0.5h | 0.5h |
| 55 | 1.3.1.4.3.4 | TRANSPORTADORAS | 0.5h | 2013-12-26 16:30 | 2013-12-26 17:00 | 54 |  |  | 2013-12-26 16:30 | 2013-12-26 17:00 | 0.5h | 0.06d | 0d | ALAN | 0.5h |  |
| 56 | 1.3.1.4.3.5 | PRODUTOS | 1h | 2013-12-26 17:00 A | 2013-12-26 18:00 | 55 | 50% | 0.5h | 2013-12-26 17:00 | 2013-12-26 18:00 | 1h | 0.05d | 0d | ALAN | 1h | 0.5h |
| 57 | 1.3.1.4.3.6 | GRUPO DE PRODUTOS | 0.5h | 2014-01-02 09:00 A | 2014-01-02 09:30 | 56 | 75% | 0.12h | 2014-01-02 09:00 | 2014-01-02 09:30 | 0.5h | 0.19d | 0d | ALAN | 0.5h | 0.38h |
| 58 | 1.3.1.4.3.7 | TIPO DE ENTRADA E SAIDA | 2h | 2014-01-02 09:30 A | 2014-01-02 11:30 | 57 | 75% | 0.5h | 2014-01-02 09:30 | 2014-01-02 11:30 | 2h | 0.05d | 0d | ALAN | 2h | 1.5h |
| 59 | 1.3.1.4.3.8 | CONDICAO DE PAGAMENTO | 0.5h | 2014-01-02 11:30 A | 2014-01-02 12:00 | 58 | 75% | 0.12h | 2014-01-02 11:30 | 2014-01-02 12:00 | 0.5h | 0.05d | 0d | ALAN | 0.5h | 0.38h |
| 60 | 1.3.1.4.3.9 | CENTRO DE CUSTO | 0.5h | 2014-01-02 13:00 A | 2014-01-02 13:30 | 59 | 75% | 0.12h | 2014-01-02 13:00 | 2014-01-02 13:30 | 0.5h | 0.19d | 0d | ALAN | 0.5h | 0.38h |
| 61 | 1.3.1.4.3.10 | NATUREZA FINANCEIRA | 2h | 2014-01-02 13:30 A | 2014-01-02 15:30 | 60 | 75% | 0.5h | 2014-01-02 13:30 | 2014-01-02 15:30 | 2h | 0.69d |  | ALAN | 2h | 1.5h |
| 62 | 1.3.1.4.3.11 | TABELA DE PRECO | 0.5h | 2014-01-02 15:30 A | 2014-01-02 16:00 A | 61 | 100% |  | 2014-01-02 15:30 | 2014-01-02 16:00 | 0.5h |  |  | ALAN | 0.5h | 0.5h |
| 63 | 1.3.1.4.3.12 | BANCOS | 1h | 2014-01-02 16:00 A | 2014-01-02 17:00 | 62 | 75% | 0.25h | 2014-01-02 16:00 | 2014-01-02 17:00 | 1h | 0.5d |  | ALAN | 1h | 0.75h |
| 64 | 1.3.1.4.3.13 | MOEDAS | 0.5h | 2014-01-02 17:00 A | 2014-01-02 17:30 A | 63 | 100% |  | 2014-01-02 17:00 | 2014-01-02 17:30 | 0.5h |  |  | ALAN | 0.5h | 0.5h |
| 65 | 1.3.1.4.3.14 | UNIDADE MEDIDA | 0.5h | 2014-01-02 17:30 A | 2014-01-02 18:00 A | 64 | 100% |  | 2014-01-02 17:30 | 2014-01-02 18:00 | 0.5h |  |  | ALAN | 0.5h | 0.5h |
| 66 | 1.3.1.4.4 | **COMPRAS** | 3d | 2014-01-07 09:00 A | 2014-01-14 18:00 |  | 73% | 0.81d | 2014-01-07 09:00 | 2014-01-14 18:00 | 3d | 0.06d | 0d |  | 16h | 12h |
| 67 | 1.3.1.4.4.1 | SOLICITACAO DE COMPRAS | 4h | 2014-01-07 09:00 A | 2014-01-07 14:00 | 51 | 75% | 1h | 2014-01-07 09:00 | 2014-01-07 14:00 | 4h | 0.19d | 0d | ALAN | 4h | 3h |
| 68 | 1.3.1.4.4.2 | GERA COTACAO | 2h | 2014-01-07 14:00 A | 2014-01-07 16:00 | 67 | 75% | 0.5h | 2014-01-07 14:00 | 2014-01-07 16:00 | 2h | 0.19d | 0d | ALAN | 2h | 1.5h |
| 69 | 1.3.1.4.4.3 | ATUALIZA COTACAO | 2h | 2014-01-07 16:00 A | 2014-01-07 18:00 | 68 | 75% | 0.5h | 2014-01-07 16:00 | 2014-01-07 18:00 | 2h | 0.19d | 0d | ALAN | 2h | 1.5h |
| 70 | 1.3.1.4.4.4 | ANALISA COTACAO | 2h | 2014-01-09 09:00 A | 2014-01-09 11:00 | 69 | 75% | 0.5h | 2014-01-09 09:00 | 2014-01-09 11:00 | 2h | 0.38d | 0d |  |  |  |
| 71 | 1.3.1.4.4.5 | PEDIDO DE COMPRA | 4h | 2014-01-09 11:00 A | 2014-01-09 16:00 | 70 | 75% | 1h | 2014-01-09 11:00 | 2014-01-09 16:00 | 4h | 1.31d |  | ALAN | 4h | 3h |
| 72 | 1.3.1.4.4.6 | ELIMINACAO DE RESIDUO | 2h | 2014-01-09 16:00 A | 2014-01-09 18:00 A | 71 | 100% |  | 2014-01-09 16:00 | 2014-01-09 18:00 | 2h |  |  |  |  |  |
| 73 | 1.3.1.4.4.7 | PRE NOTA DE ENTRADA | 2h | 2014-01-14 09:00 A | 2014-01-14 11:00 A | 72 | 100% |  | 2014-01-14 09:00 | 2014-01-14 11:00 | 2h |  |  |  |  |  |
| 74 | 1.3.1.4.4.8 | DOCUMENTO DE ENTRADA | 4h | 2014-01-14 11:00 A | 2014-01-14 16:00 | 73 | 75% | 1h | 2014-01-14 11:00 | 2014-01-14 16:00 | 4h | 0.06d | 0d | ALAN | 4h | 3h |
| 75 | 1.3.1.4.4.9 | CONHECIMENTO DE FRETE | 2h | 2014-01-14 16:00 | 2014-01-14 18:00 | 74 |  |  | 2014-01-14 16:00 | 2014-01-14 18:00 | 2h | 0.06d |  |  |  |  |

| ID | WBS | Task | Duration | Start | Finish | Predecessors | Complete | Remaining | Baseline start | Baseline finish | Baseline duration | Total slack | Free slack | Resources | Work | Actual work |
| --- | --- | --- | --- | --- | --- | --- | --- | --- | --- | --- | --- | --- | --- | --- | --- | --- |
| 76 | 1.3.1.4.5 | **ESTOQUE** | 2.75d | 2014-01-16 09:00 A | 2014-01-23 16:00 |  | 59% | 1.12d | 2014-01-16 09:00 | 2014-01-23 16:00 | 2.75d | 0.06d | 0d |  | 22h | 13h |
| 77 | 1.3.1.4.5.1 | TIPO DE MOVIMENTACAO | 2h | 2014-01-16 09:00 A | 2014-01-16 11:00 | 66 | 25% | 1.5h | 2014-01-16 09:00 | 2014-01-16 11:00 | 2h | 0.09d | 0d | ALAN | 2h | 0.5h |
| 78 | 1.3.1.4.5.2 | SALDOS INICIAIS | 1h | 2014-01-16 11:00 A | 2014-01-16 12:00 | 77 | 75% | 0.25h | 2014-01-16 11:00 | 2014-01-16 12:00 | 1h | 0.09d | 0d | ALAN | 1h | 0.75h |
| 79 | 1.3.1.4.5.3 | SALDOS EM ESTOQUE | 1h | 2014-01-16 13:00 A | 2014-01-16 14:00 | 78 | 75% | 0.25h | 2014-01-16 13:00 | 2014-01-16 14:00 | 1h | 0.38d | 0d | ALAN | 1h | 0.75h |
| 80 | 1.3.1.4.5.4 | MOVIMENTOS INTERNOS | 4h | 2014-01-16 14:00 A | 2014-01-16 18:00 | 79 | 75% | 1h | 2014-01-16 14:00 | 2014-01-16 18:00 | 4h | 1.81d |  | ALAN | 4h | 3h |
| 81 | 1.3.1.4.5.5 | ESTRUTURA DE PRODUTOS | 1h | 2014-01-21 09:00 A | 2014-01-21 10:00 A | 80 | 100% |  | 2014-01-21 09:00 | 2014-01-21 10:00 | 1h |  |  | ALAN | 1h | 1h |
| 82 | 1.3.1.4.5.6 | ORDEM DE PRODUCAO | 4h | 2014-01-21 10:00 A | 2014-01-21 15:00 A | 81 | 100% |  | 2014-01-21 10:00 | 2014-01-21 15:00 | 4h |  |  | ALAN | 4h | 4h |
| 83 | 1.3.1.4.5.7 | AJUSTE DE EMPENHOS | 1h | 2014-01-21 15:00 A | 2014-01-21 16:00 A | 82 | 100% |  | 2014-01-21 15:00 | 2014-01-21 16:00 | 1h |  |  | ALAN | 1h | 1h |
| 84 | 1.3.1.4.5.8 | TRANSFERENCIAS | 2h | 2014-01-21 16:00 A | 2014-01-21 18:00 A | 83 | 100% |  | 2014-01-21 16:00 | 2014-01-21 18:00 | 2h |  |  | ALAN | 2h | 2h |
| 85 | 1.3.1.4.5.9 | RECALCULO DO SALDO EM ESTOQUE | 1h | 2014-01-23 09:00 | 2014-01-23 10:00 | 84 |  |  | 2014-01-23 09:00 | 2014-01-23 10:00 | 1h | 0.06d | 0d | ALAN | 1h |  |
| 86 | 1.3.1.4.5.10 | RECALCULO DO CUSTO DE REPOSICAO | 1h | 2014-01-23 10:00 | 2014-01-23 11:00 | 85 |  |  | 2014-01-23 10:00 | 2014-01-23 11:00 | 1h | 0.06d | 0d | ALAN | 1h |  |
| 87 | 1.3.1.4.5.11 | INVENTARIO | 2h | 2014-01-23 11:00 | 2014-01-23 14:00 | 86 |  |  | 2014-01-23 11:00 | 2014-01-23 14:00 | 2h | 0.06d | 0d | ALAN | 2h |  |
| 88 | 1.3.1.4.5.12 | FECHAMENTO | 2h | 2014-01-23 14:00 | 2014-01-23 16:00 | 87 |  |  | 2014-01-23 14:00 | 2014-01-23 16:00 | 2h | 0.06d |  | ALAN | 2h |  |
| 89 | 1.3.1.4.6 | **FATURAMENTO** | 3.25d | 2014-01-23 16:00 A | 2014-02-04 18:00 |  | 65% | 1.14d | 2014-01-23 16:00 | 2014-02-04 18:00 | 3.25d | 0.5d | 0d |  | 26h | 16.9h |
| 90 | 1.3.1.4.6.1 | PEDIDO DE VENDA / ORCAMENTO | 2h | 2014-01-23 16:00 A | 2014-01-23 18:00 | 76 | 25% | 1.5h | 2014-01-23 16:00 | 2014-01-23 18:00 | 2h | 3.5d |  | ALAN | 2h | 0.5h |
| 91 | 1.3.1.4.6.2 | LIBERACAO PEDIDO DE VENDA | 4h | 2014-01-28 09:00 A | 2014-01-28 14:00 A | 90 | 100% |  | 2014-01-28 09:00 | 2014-01-28 14:00 | 4h |  |  | ALAN | 4h | 4h |
| 92 | 1.3.1.4.6.3 | ANALISE DE CREDITO | 4h | 2014-01-28 14:00 A | 2014-01-28 18:00 A | 91 | 100% |  | 2014-01-28 14:00 | 2014-01-28 18:00 | 4h |  |  | ALAN | 4h | 4h |
| 93 | 1.3.1.4.6.4 | MANUTENCAO COMISSAO | 4h | 2014-01-30 09:00 A | 2014-01-30 14:00 A | 92 | 100% |  | 2014-01-30 09:00 | 2014-01-30 14:00 | 4h |  |  | ALAN | 4h | 4h |
| 94 | 1.3.1.4.6.5 | PAGAMENTO COMISSAO | 4h | 2014-01-30 14:00 A | 2014-01-30 18:00 A | 93 | 100% |  | 2014-01-30 14:00 | 2014-01-30 18:00 | 4h |  |  | ALAN | 4h | 4h |
| 95 | 1.3.1.4.6.6 | DOCUMENTO DE SAIDA | 4h | 2014-02-04 09:00 A | 2014-02-04 14:00 | 94 | 10% | 3.6h | 2014-02-04 09:00 | 2014-02-04 14:00 | 4h | 0.5d | 0d | ALAN | 4h | 0.4h |
| 96 | 1.3.1.4.6.7 | EXCLUSAO DOCUMENTO SAIDA | 4h | 2014-02-04 14:00 | 2014-02-04 18:00 | 95 |  |  | 2014-02-04 14:00 | 2014-02-04 18:00 | 4h | 0.5d |  | ALAN | 4h |  |
| 97 | 1.3.1.4.7 | **NOTA FISCAL ELETRONICA SERVICO** | 1d | 2014-02-06 09:00 A | 2014-02-06 18:00 |  | 50% | 0.5d | 2014-02-06 09:00 | 2014-02-06 18:00 | 1d | 0.5d | 0d |  | 8h | 4h |
| 98 | 1.3.1.4.7.1 | CONFIGURACAO NFE | 8h | 2014-02-06 09:00 A | 2014-02-06 18:00 | 89 | 50% | 4h | 2014-02-06 09:00 | 2014-02-06 18:00 | 8h | 0.5d |  | ALAN | 8h | 4h |
| 99 | 1.3.1.4.8 | **NOTA FISCAL ELETRONICA** | 4d | 2014-02-11 09:00 A | 2014-02-20 18:00 |  | 19% | 3.25d | 2014-02-11 09:00 | 2014-02-20 18:00 | 4d | 0.75d | 0d |  | 32h | 6h |
| 100 | 1.3.1.4.8.1 | CONFIGURACAO WEB SERVICE | 8h | 2014-02-11 09:00 A | 2014-02-11 18:00 | 97 | 50% | 4h | 2014-02-11 09:00 | 2014-02-11 18:00 | 8h | 0.25d | 0d | ALAN | 8h | 4h |
| 101 | 1.3.1.4.8.2 | VALIDACAO DOS CADASTROS | 8h | 2014-02-13 09:00 A | 2014-02-13 18:00 | 100 | 25% | 6h | 2014-02-13 09:00 | 2014-02-13 18:00 | 8h | 0.75d | 0d | ALAN | 8h | 2h |
| 102 | 1.3.1.4.8.3 | TESTE DE TRANSMISSSAO | 16h | 2014-02-18 09:00 | 2014-02-20 18:00 | 101 |  |  | 2014-02-18 09:00 | 2014-02-20 18:00 | 16h | 0.75d |  | ALAN | 16h |  |

| ID | WBS | Task | Type | Duration | Start | Finish | Predecessors | Complete | Remaining | Baseline start | Baseline finish | Baseline duration | Total slack | Free slack | Resources | Work | Actual work |
| --- | --- | --- | --- | --- | --- | --- | --- | --- | --- | --- | --- | --- | --- | --- | --- | --- | --- |
| 103 | 1.3.1.4.9 | **FINANCEIRO** |  | 7.75d | 2014-02-25 09:00 A | 2014-03-20 16:00 |  | 28% | 5.56d | 2014-02-25 09:00 | 2014-03-20 16:00 | 7.75d | 0d |  |  | 62h | 17.5h |
| 104 | 1.3.1.4.9.1 | **CONTAS A RECEBER** |  | 2d | 2014-02-25 09:00 A | 2014-02-27 18:00 |  | 47% | 1.06d | 2014-02-25 09:00 | 2014-02-27 18:00 | 2d | 0.75d | 0d |  | 16h | 7.5h |
| 105 | 1.3.1.4.9.1.1 | CONTAS A RECEBER |  | 8h | 2014-02-25 09:00 A | 2014-02-25 18:00 | 99 | 75% | 2h | 2014-02-25 09:00 | 2014-02-25 18:00 | 8h | 0.19d | 0d | ALAN | 8h | 6h |
| 106 | 1.3.1.4.9.1.2 | BAIXAS A RECEBER |  | 2h | 2014-02-27 09:00 A | 2014-02-27 11:00 | 105 | 75% | 0.5h | 2014-02-27 09:00 | 2014-02-27 11:00 | 2h | 0.75d | 0d | ALAN | 2h | 1.5h |
| 107 | 1.3.1.4.9.1.3 | TRANSFERENCIA DE CARTEIRAS |  | 2h | 2014-02-27 11:00 | 2014-02-27 14:00 | 106 |  |  | 2014-02-27 11:00 | 2014-02-27 14:00 | 2h | 0.75d | 0d | ALAN | 2h |  |
| 108 | 1.3.1.4.9.1.4 | COMPENSACAO CR |  | 2h | 2014-02-27 14:00 | 2014-02-27 16:00 | 107 |  |  | 2014-02-27 14:00 | 2014-02-27 16:00 | 2h | 0.75d | 0d | ALAN | 2h |  |
| 109 | 1.3.1.4.9.1.5 | FATURAS A RECEBER |  | 2h | 2014-02-27 16:00 | 2014-02-27 18:00 | 108 |  |  | 2014-02-27 16:00 | 2014-02-27 18:00 | 2h | 0.75d |  | ALAN | 2h |  |
| 110 | 1.3.1.4.9.2 | **CONTAS A PAGAR** |  | 2.25d | 2014-03-04 09:00 A | 2014-03-11 11:00 |  | 42% | 1.31d | 2014-03-04 09:00 | 2014-03-11 11:00 | 2.25d | 0.06d | 0d |  | 18h | 7.5h |
| 111 | 1.3.1.4.9.2.1 | CONTAS A PAGAR |  | 8h | 2014-03-04 09:00 A | 2014-03-04 18:00 | 104 | 75% | 2h | 2014-03-04 09:00 | 2014-03-04 18:00 | 8h | 0.19d | 0d | ALAN | 8h | 6h |
| 112 | 1.3.1.4.9.2.2 | BAIXAS A PAGAR |  | 2h | 2014-03-06 09:00 A | 2014-03-06 11:00 | 111 | 75% | 0.5h | 2014-03-06 09:00 | 2014-03-06 11:00 | 2h | 0.06d | 0d | ALAN | 2h | 1.5h |
| 113 | 1.3.1.4.9.2.3 | BORDERO PAGAMENTO |  | 2h | 2014-03-06 11:00 | 2014-03-06 14:00 | 112 |  |  | 2014-03-06 11:00 | 2014-03-06 14:00 | 2h | 0.06d | 0d | ALAN | 2h |  |
| 114 | 1.3.1.4.9.2.4 | FATURAS A PAGAR |  | 2h | 2014-03-06 14:00 | 2014-03-06 16:00 | 113 |  |  | 2014-03-06 14:00 | 2014-03-06 16:00 | 2h | 0.06d | 0d | ALAN | 2h |  |
| 115 | 1.3.1.4.9.2.5 | CHEQUE SOBRE TITULO |  | 2h | 2014-03-06 16:00 | 2014-03-06 18:00 | 114 |  |  | 2014-03-06 16:00 | 2014-03-06 18:00 | 2h | 0.06d | 0d | ALAN | 2h |  |
| 116 | 1.3.1.4.9.2.6 | COMPENSACAO CP |  | 2h | 2014-03-11 09:00 | 2014-03-11 11:00 | 115 |  |  | 2014-03-11 09:00 | 2014-03-11 11:00 | 2h | 0.06d |  | ALAN | 2h |  |
| 117 | 1.3.1.4.9.3 | **CNAB CP/CR** |  | 2d | 2014-03-11 11:00 | 2014-03-18 11:00 |  |  |  | 2014-03-11 11:00 | 2014-03-18 11:00 | 2d | 0.06d | 0d |  | 16h |  |
| 118 | 1.3.1.4.9.3.1 | CONFIGURACAO ARQUIVO ENVIO (01 BANCO) |  | 8h | 2014-03-11 11:00 | 2014-03-13 11:00 | 110 |  |  | 2014-03-11 11:00 | 2014-03-13 11:00 | 8h | 0.06d | 0d | ALAN | 8h |  |
| 119 | 1.3.1.4.9.3.2 | CONFIGURACAO ARQUIVO RETORNO (01 BANCO) |  | 8h | 2014-03-13 11:00 | 2014-03-18 11:00 | 118 |  |  | 2014-03-13 11:00 | 2014-03-18 11:00 | 8h | 0.06d |  | ALAN | 8h |  |
| 120 | 1.3.1.4.9.4 | SALDOS BANCARIOS |  | 2h | 2014-03-18 11:00 A | 2014-03-18 14:00 | 117 | 25% | 1.5h | 2014-03-18 11:00 | 2014-03-18 14:00 | 2h | 0.19d | 0d | ALAN | 2h | 0.5h |
| 121 | 1.3.1.4.9.5 | MOVIMENTACAO BANCARIA |  | 2h | 2014-03-18 14:00 A | 2014-03-18 16:00 | 120 | 75% | 0.5h | 2014-03-18 14:00 | 2014-03-18 16:00 | 2h | 0.06d | 0d | ALAN | 2h | 1.5h |
| 122 | 1.3.1.4.9.6 | RECALCULO SALDO BANCARIO |  | 2h | 2014-03-18 16:00 A | 2014-03-18 18:00 | 121 | 25% | 1.5h | 2014-03-18 16:00 | 2014-03-18 18:00 | 2h | 0d |  | ALAN | 2h | 0.5h |
| 123 | 1.3.1.4.9.7 | CAIXINHA |  | 2h | 2014-03-20 09:00 | 2014-03-20 11:00 | 122 |  |  | 2014-03-20 09:00 | 2014-03-20 11:00 | 2h | 0d |  | ALAN | 2h |  |
| 124 | 1.3.1.4.9.8 | FLUXO DE CAIXA |  | 4h | 2014-03-20 11:00 | 2014-03-20 16:00 | 123 |  |  | 2014-03-20 11:00 | 2014-03-20 16:00 | 4h | 0d |  | ALAN | 4h |  |
| 125 | 1.3.1.5 | G5 - DISPONIBILIZACAO DOS ESPECIFICOS | milestone | 0h | 2014-03-20 16:00 | 2014-03-20 16:00 | 39 |  |  | 2014-03-20 16:00 | 2014-03-20 16:00 | 0h | 0d |  | ALAN |  |  |
| 126 | 1.3.1.6 | G6 - VALIDACAO DA PARAMETRIZACAO | milestone | 0h | 2014-03-20 16:00 | 2014-03-20 16:00 | 125 |  |  | 2014-03-20 16:00 | 2014-03-20 16:00 | 0h | 0d |  | ALAN |  |  |

| ID | WBS | Task | Duration | Start | Finish | Predecessors | Baseline start | Baseline finish | Baseline duration | Total slack | Resources | Work |
| --- | --- | --- | --- | --- | --- | --- | --- | --- | --- | --- | --- | --- |
| 127 | 1.3.2 | **H - PROTOTIPOS** | 3d | 2014-03-20 16:00 | 2014-04-01 16:00 |  | 2014-03-20 16:00 | 2014-04-01 16:00 | 3d | 0d |  | 24h |
| 128 | 1.3.2.1 | H1 - AMBIENTE DE PROTOTIPO | 4h | 2014-03-20 16:00 | 2014-03-25 11:00 | 35 | 2014-03-20 16:00 | 2014-03-25 11:00 | 4h | 0d | ALAN | 4h |
| 129 | 1.3.2.2 | H2 - DISPONIBILIZACAO DOS ESPECIFICOS | 4h | 2014-03-25 11:00 | 2014-03-25 16:00 | 128 | 2014-03-25 11:00 | 2014-03-25 16:00 | 4h | 0d | ALAN | 4h |
| 130 | 1.3.2.3 | H3 - DOCUMENTOS A SEREM PROTOTIPADOS | 2h | 2014-03-25 16:00 | 2014-03-25 18:00 | 129 | 2014-03-25 16:00 | 2014-03-25 18:00 | 2h | 0d | ALAN | 2h |
| 131 | 1.3.2.4 | H4 - PROTOTIPO ISOLADO INDEPENDENTE | 4h | 2014-03-27 09:00 | 2014-03-27 14:00 | 130 | 2014-03-27 09:00 | 2014-03-27 14:00 | 4h | 0d | ALAN | 4h |
| 132 | 1.3.2.5 | H5 - REVISAO DO PROTOTIPO ISOLADO | 2h | 2014-03-27 14:00 | 2014-03-27 16:00 | 131 | 2014-03-27 14:00 | 2014-03-27 16:00 | 2h | 0d | ALAN | 2h |
| 133 | 1.3.2.6 | H6 - PROTOTIPO INTEGRADO | 4h | 2014-03-27 16:00 | 2014-04-01 11:00 | 132 | 2014-03-27 16:00 | 2014-04-01 11:00 | 4h | 0d | ALAN | 4h |
| 134 | 1.3.2.7 | H7 - VALIDACAO DO PROTOTIPO | 4h | 2014-04-01 11:00 | 2014-04-01 16:00 | 133 | 2014-04-01 11:00 | 2014-04-01 16:00 | 4h | 0d | ALAN | 4h |
| 135 | 1.3.3 | **I - DEFINICAO DO AMBIENTE DE PRODUCAO** | 0.75d | 2014-04-01 16:00 | 2014-04-03 14:00 |  | 2014-04-01 16:00 | 2014-04-03 14:00 | 0.75d | 0d |  | 6h |
| 136 | 1.3.3.1 | I1 - VALIDAR ACESSOS E TREINAMENTOS DOS USUARIOS FINAIS | 2h | 2014-04-01 16:00 | 2014-04-01 18:00 | 127 | 2014-04-01 16:00 | 2014-04-01 18:00 | 2h | 0d | ALAN | 2h |
| 137 | 1.3.3.2 | I2 - EXECUCAO DO PLANO DE VIRADA | 2h | 2014-04-03 09:00 | 2014-04-03 11:00 | 136 | 2014-04-03 09:00 | 2014-04-03 11:00 | 2h | 0d | ALAN | 2h |
| 138 | 1.3.3.3 | I3 - DECISAO DA VIRADA | 2h | 2014-04-03 11:00 | 2014-04-03 14:00 | 137 | 2014-04-03 11:00 | 2014-04-03 14:00 | 2h | 0d | ALAN | 2h |
| 139 | 1.3.4 | **J - ACOMPANHAMENTO** | 2d | 2014-04-03 14:00 | 2014-04-10 14:00 |  | 2014-04-03 14:00 | 2014-04-10 14:00 | 2d | 0d |  | 16h |
| 140 | 1.3.4.1 | J1 - ACOMPANHAMENTO DAS ATIVIDADES INICIAIS | 8h | 2014-04-03 14:00 | 2014-04-08 14:00 | 135 | 2014-04-03 14:00 | 2014-04-08 14:00 | 8h | 0d | ALAN | 8h |
| 141 | 1.3.4.2 | J2 - ACOMPANHAMENTO DOS PRIMEIROS FECHAMENTOS | 8h | 2014-04-08 14:00 | 2014-04-10 14:00 | 140 | 2014-04-08 14:00 | 2014-04-10 14:00 | 8h | 0d | ALAN | 8h |
| 142 | 1.4 | **FASE IV - ENCERRAMENTO** | 50d? | 2013-10-13 00:00 | 2014-04-10 18:00 |  | 2014-04-10 14:00 | 2014-04-10 18:00 | 0.5d | 0d |  | 4h |
| 143 | 1.4.1 | **K - ENCERRAMENTO DO PROJETO** | 50d? | 2013-10-13 00:00 | 2014-04-10 18:00 |  | 2014-04-10 14:00 | 2014-04-10 18:00 | 0.5d | 0d |  | 4h |
| 144 | 1.4.1.1 | K1 - ENCERRAMENTO INTERNO DO PROJETO | 1h | 2014-04-10 14:00 | 2014-04-10 15:00 | 34 | 2014-04-10 14:00 | 2014-04-10 15:00 | 1h | 0d | TOSTES | 1h |
| 145 | 1.4.1.2 | K2 - ENCERRAMENTO COM O CLIENTE | 1h | 2014-04-10 15:00 | 2014-04-10 16:00 | 144 | 2014-04-10 15:00 | 2014-04-10 16:00 | 1h | 0d | TOSTES | 1h |
| 146 | 1.4.1.3 | K3 - TRANSICAO DO PROJETO | 2h | 2014-04-10 16:00 | 2014-04-10 18:00 | 145 | 2014-04-10 16:00 | 2014-04-10 18:00 | 2h | 0d | TOSTES | 2h |
